# Cronograma AFSP - Integrado

Schedule from MS Project XML, 2023-09-11 to 2029-12-28, A marks actual dates.

## Calendars

- Estándar: Mon-Fri 09:00-13:00, 15:00-19:00; Sat-Sun off.

## Schedule

| ID | WBS | Task | Type | Duration | Start | Finish | Complete | Remaining | Estado UCP | Sistema | Cambio propuesto |
| --- | --- | --- | --- | --- | --- | --- | --- | --- | --- | --- | --- |
| 2 | 1 | **Proyecto AFSP** |  | 1645d? | 2023-09-11 A | 2029-12-28 | 57% | 700.78d? |  |  |  |
| 3 | 1.1 | **Aplicativos de uso común** |  | 316d | 2025-02-01 A | 2026-04-20 A | 100% |  | Completada |  |  |
| 4 | 1.1.1 | **C1 - Elaboración de MFDs** |  | 316d | 2025-02-01 A | 2026-04-20 A | 100% |  |  |  |  |
| 5 | 1.1.1.1 | MFD Estructura del administrador de catálogos | manual | 76d | 2025-02-01 A | 2025-05-16 A | 100% |  |  |  |  |
| 6 | 1.1.1.2 | MFD Gestor de datos (poblado) del administrador de catálogos | manual | 75d | 2025-02-03 A | 2025-05-16 A | 100% |  |  |  |  |
| 7 | 1.1.1.3 | MFD Linea gráfica | manual | 112d | 2025-05-15 A | 2025-10-17 A | 100% |  |  |  |  |
| 8 | 1.1.1.4 | MFD Administrador de Usuarios (Gestor de Identidades) | manual | 129d | 2025-04-22 A | 2025-10-17 A | 100% |  |  |  |  |
| 9 | 1.1.1.5 | MFD Escritorio Virtual y notificaciones v1.0 | manual | 129d | 2025-04-22 A | 2025-10-17 A | 100% |  |  |  |  |
| 10 | 1.1.1.6 | MFD Landing Page v1.0 - actualización | manual | 226d | 2025-05-09 A | 2026-03-20 A | 100% |  |  |  |  |
| 11 | 1.1.1.7 | Administrador de Consultas y Reportes | manual | 268d | 2025-04-10 A | 2026-04-20 A | 100% |  |  |  |  |
| 12 | 1.1.1.8 | Gestor de Correlativos | manual | 113d | 2025-11-13 A | 2026-04-20 A | 100% |  |  |  |  |
| 13 | 1.1.1.9 | Gestión de Plantillas | manual | 113d | 2025-11-13 A | 2026-04-20 A | 100% |  |  |  |  |
| 14 | 1.2 | **Clasificadores y Catálogos** |  | 1074d | 2023-09-11 A | 2027-10-21 | 92% | 82.8d | En desarrollo |  |  |
| 15 | 1.2.1 | **C1 - Elaboración de MFDs** |  | 1074d | 2023-09-11 A | 2027-10-21 | 92% | 82.8d |  |  |  |
| 16 | 1.2.1.1 | Clasificador de Ubicación Geográfica | manual | 210d | 2024-07-11 A | 2025-04-30 A | 100% |  | MFD por crear en Administrador de Catálogo | Presupuesto |  |
| 17 | 1.2.1.2 | Clasificador de Fuentes de Financiamiento | manual | 189d | 2024-07-26 A | 2025-04-16 A | 100% |  | En desarrollo- fábrica (Aprobados DG y OGTI) | Presupuesto |  |
| 18 | 1.2.1.3 | Unidades de Medida | manual | 102d | 2024-12-10 A | 2025-04-30 A | 100% |  | MFD por crear en Administrador de Catálogo | Presupuesto |  |
| 19 | 1.2.1.4 | Clasificador Institucional | manual | 454d | 2023-10-13 A | 2025-07-09 A | 100% |  | En desarrollo- fábrica (Aprobados DG y OGTI) | Presupuesto |  |
| 20 | 1.2.1.5 | Clasificador de Ingresos (recursos por rubro) | manual | 358d | 2024-08-01 A | 2025-12-14 A | 100% |  | En desarrollo- fábrica (Aprobados DG y OGTI) | Presupuesto |  |
| 21 | 1.2.1.6 | Clasificador de Mancomunidades | manual | 235d | 2024-10-17 A | 2025-09-10 A | 100% |  | En desarrollo- fábrica (Aprobados DG y OGTI) | Presupuesto |  |
| 22 | 1.2.1.7 | Clasificador de Objeto de Gasto | manual | 358d | 2024-08-01 A | 2025-12-14 A | 100% |  | En desarrollo- fábrica (Aprobados DG y OGTI) | Presupuesto |  |
| 23 | 1.2.1.8 | Clasificador Funcional del Gasto | manual | 322d | 2024-09-20 A | 2025-12-14 A | 100% |  | En desarrollo- fábrica (Aprobados DG y OGTI) | Presupuesto |  |
| 24 | 1.2.1.9 | Catálogo de Ambito y Grupo de Ámbito institucional | manual | 86d | 2025-11-03 A | 2026-03-01 A | 100% |  | En desarrollo- fábrica (Aprobados DG y OGTI) | Presupuesto |  |
| 25 | 1.2.1.10 | Catálogo de Finalidades / Sub actividad | manual | 82d | 2026-02-10 A | 2026-11-13 | 99% | 0.82d | MFD en elaboración | Presupuesto | Regularizar cierre |
| 26 | 1.2.1.11 | Catálogo relación de Objeto del Gasto por Fuente | manual | 67d | 2026-02-10 A | 2026-05-13 A | 100% |  | En desarrollo- fábrica (Aprobados DG y OGTI) | Presupuesto |  |
| 27 | 1.2.1.12 | Catálogo relación de Ingresos por Fuente | manual | 80d | 2026-01-22 A | 2026-05-13 A | 100% |  | En desarrollo- fábrica (Aprobados DG y OGTI) | Presupuesto |  |
| 28 | 1.2.1.13 | Catálogo Sectorial - Administrador de Catálogos | manual | 50d | 2025-12-22 A | 2026-02-27 A | 100% |  | MFD por crear en Administrador de Catálogo | Presupuesto |  |
| 29 | 1.2.1.14 | Catálogo Función - Administrador de Catálogos | manual | 50d | 2026-01-07 A | 2026-03-17 A | 100% |  | MFD por crear en Administrador de Catálogo | Presupuesto |  |
| 30 | 1.2.1.15 | Catálogo División Funcional - Administrador de Catálogos | manual | 90d | 2025-11-12 A | 2026-03-17 A | 100% |  | MFD por crear en Administrador de Catálogo | Presupuesto |  |
| 31 | 1.2.1.16 | Catálogo Grupo Funcional - | manual | 50d | 2026-01-07 A | 2026-03-17 A | 100% |  | MFD por crear en Administrador de Catálogo | Presupuesto |  |
| 32 | 1.2.1.17 | Catálogo Categoría Presupuestal - Administrador de Catálogos | manual | 82d | 2025-11-24 A | 2026-03-17 A | 100% |  | MFD por crear en Administrador de Catálogo | Presupuesto |  |
| 33 | 1.2.1.18 | Catálogo Tipo de Programa Presupuestal - Administrador de Catálogos | manual | 77d | 2025-12-01 A | 2026-03-17 A | 100% |  | MFD por crear en Administrador de Catálogo | Presupuesto |  |
| 34 | 1.2.1.19 | Catálogo Tipo de Uso (Clasificador - Catálogo) - Administrador de Catálogos | manual | 82d | 2025-11-24 A | 2026-03-17 A | 100% |  | MFD por crear en Administrador de Catálogo | Presupuesto |  |
| 35 | 1.2.1.20 | Catálogo Tipicidad - Administrador de Catálogos | manual | 82d | 2025-11-24 A | 2026-03-17 A | 100% |  | MFD por crear en Administrador de Catálogo | Presupuesto |  |
| 36 | 1.2.1.21 | Catálogo Tipo Responsable - Administrador de Catálogos | manual | 1d | 2026-03-17 A | 2026-03-17 A | 100% |  | MFD por crear en Administrador de Catálogo | Presupuesto |  |
| 37 | 1.2.1.22 | Catálogo Tipo de Mancomunidad - Administrador de Catálogos | manual | 77d | 2025-12-01 A | 2026-03-17 A | 100% |  | MFD por crear en Administrador de Catálogo | Presupuesto |  |
| 38 | 1.2.1.23 | Catálogo Motivo de Rechazo - Administrador de Catálogos | manual | 66d | 2025-12-01 A | 2026-03-02 A | 100% |  | MFD por crear en Administrador de Catálogo | Presupuesto |  |
| 39 | 1.2.1.24 | Catálogo Categoría de Gasto - Administrador de Catálogos | manual | 66d | 2025-12-01 A | 2026-03-02 A | 100% |  | MFD por crear en Administrador de Catálogo | Presupuesto |  |
| 40 | 1.2.1.25 | Catálogo Tipo de Gasto - Administrador de Catálogos | manual | 72d | 2025-11-24 A | 2026-03-03 A | 100% |  | MFD por crear en Administrador de Catálogo | Presupuesto |  |
| 41 | 1.2.1.26 | Catálogo Catálogo de Clasificadores y Catálogos - Administrador de Catálogos | manual | 57d | 2025-12-15 A | 2026-03-03 A | 100% |  | MFD por crear en Administrador de Catálogo | Presupuesto |  |
| 42 | 1.2.1.27 | Catálogo Programas Presupuestales | manual | 336d | 2025-01-16 A | 2026-04-30 A | 100% |  | En desarrollo- fábrica (Aprobados DG y OGTI) | Presupuesto |  |
| 43 | 1.2.1.28 | Catálogo Productos | manual | 239d | 2025-06-02 A | 2026-04-30 A | 100% |  | En desarrollo- fábrica (Aprobados DG y OGTI) | Presupuesto |  |
| 44 | 1.2.1.29 | Catálogo Actividades | manual | 175d | 2025-07-16 A | 2026-03-17 A | 100% |  | En desarrollo- fábrica (Aprobados DG y OGTI) | Presupuesto |  |
| 45 | 1.2.1.30 | Catálogo Indicadores (producción fisica) | manual | 267d | 2025-08-15 A | 2026-08-24 A | 100% |  | MFD aprobado por la DG | Presupuesto |  |
| 46 | 1.2.1.31 | Catálogo de relación Estructura Funcional Programática - EFP | manual | 142d | 2025-11-19 A | 2026-11-13 | 99% | 1.42d | MFD en elaboración | Presupuesto | Regularizar cierre |
| 47 | 1.2.1.32 | Clasificador Programático (Entidad) | manual | 106d | 2026-08-03 A | 2026-12-28 A | 100% |  | MFD en elaboración | Presupuesto |  |
| 48 | 1.2.1.33 | Clasificador de Recursos hidricos y saneamiento | manual | 66d | 2026-11-02 | 2027-02-01 |  |  | Sin iniciar | Presupuesto | Reprogramar por avance real |
| 49 | 1.2.1.34 | Clasificador de Cambio Climático | manual | 66d | 2026-12-03 | 2027-03-04 |  |  | Sin iniciar | Presupuesto |  |
| 50 | 1.2.1.35 | Clasificador de Pueblos indigenas | manual | 60d | 2027-01-07 | 2027-03-31 |  |  | Sin iniciar | Presupuesto |  |
| 51 | 1.2.1.36 | Clasificador de Enfoque de Género | manual | 55d | 2026-11-02 | 2027-01-15 |  |  | Sin iniciar | Presupuesto | Reprogramar por avance real |
| 52 | 1.2.1.37 | Catálogo de Indicadores (versión 2) | manual | 75d | 2026-08-17 A | 2026-11-27 | 58% | 31.5d | MFD en elaboración | Presupuesto |  |
| 53 | 1.2.1.38 | Catálogos de evaluación | manual | 60d | 2027-01-04 | 2027-03-26 |  |  | Sin iniciar | Presupuesto |  |
| 54 | 1.2.1.39 | Catálogo Ambito Categoría Presupuestal | manual | 111d | 2026-03-09 A | 2026-08-10 A | 100% |  | MFD por crear en Administrador de Catálogo | Presupuesto |  |
| 55 | 1.2.1.40 | Catálogo Tipo Actividad - Proyecto | manual | 119d | 2026-03-18 A | 2026-08-31 A | 100% |  | MFD por crear en Administrador de Catálogo | Presupuesto |  |
| 56 | 1.2.1.41 | Catálogo Niveles de Clasificador | manual | 119d | 2026-03-18 A | 2026-08-31 A | 100% |  | MFD por crear en Administrador de Catálogo | Presupuesto |  |
| 57 | 1.2.1.42 | Catálogo Grupo ETES | manual | 106d | 2026-04-06 A | 2026-08-31 A | 100% |  | MFD por crear en Administrador de Catálogo | Presupuesto |  |
| 58 | 1.2.1.43 | Catálogo Niveles Habilitados por perfil | manual | 106d | 2026-04-06 A | 2026-08-31 A | 100% |  | MFD aprobado por la DG | Presupuesto |  |
| 59 | 1.2.1.44 | Catálogo de equipo de trabajo | manual | 106d | 2026-04-06 A | 2026-11-13 | 99% | 1.06d | MFD en elaboración | Presupuesto | Regularizar cierre |
| 60 | 1.2.1.45 | Catálogo criterio de conformación | manual | 106d | 2026-04-06 A | 2026-11-13 | 99% | 1.06d | MFD en elaboración | Presupuesto | Regularizar cierre |
| 61 | 1.2.1.46 | Gestor de control de plazos | manual | 46d | 2026-09-14 A | 2026-11-16 | 60% | 18.4d | MFD en elaboración | Inversiones |  |
| 62 | 1.2.1.47 | Gestor de responsables (responsables por equipo) | manual | 118d | 2025-12-08 A | 2026-11-13 | 99% | 1.18d | MFD en elaboración | Presupuesto | Regularizar cierre |
| 63 | 1.2.1.48 | Catálogo de Grupo de Trabajo | manual | 22d | 2026-09-01 A | 2026-11-13 | 99% | 0.22d | MFD en elaboración | Presupuesto | Regularizar cierre |
| 64 | 1.2.1.49 | Catálogo de relación perfil por ámbito de categoria presupuestaria | manual | 46d | 2026-09-07 A | 2026-11-09 | 77% | 10.72d | MFD en elaboración | Presupuesto |  |
| 65 | 1.2.1.50 | Catálogo de Versiones de Presupuesto | manual | 85d | 2026-08-24 A | 2026-12-18 | 43% | 48.6d | MFD en elaboración | Presupuesto |  |
| 66 | 1.2.1.51 | Catálogo de Archivos APM | manual | 80d | 2026-09-15 A | 2027-01-04 | 14% | 68.95d | MFD en elaboración | Presupuesto |  |
| 67 | 1.2.1.52 | Catálogo Único de Bienes, Servicios y Obras - Versión 2 | manual | 304d | 2024-11-04 A | 2026-01-01 A | 100% |  | En desarrollo- fábrica (Aprobados DG y OGTI) | Abastecimiento |  |
| 68 | 1.2.1.53 | Catálogo Registro Único de Proveedores y Beneficiarios - CRUPB | manual | 600d | 2023-10-16 A | 2026-01-30 A | 100% |  | En desarrollo- fábrica (Aprobados DG y OGTI) | Abastecimiento |  |
| 69 | 1.2.1.54 | Catálogo de procesos de contratación | manual | 130d | 2025-07-01 A | 2025-12-29 A | 100% |  | En desarrollo- fábrica (Aprobados DG y OGTI) | Abastecimiento |  |
| 70 | 1.2.1.55 | Catálogo de almacenes | manual | 56d | 2026-03-31 A | 2026-06-16 A | 100% |  | MFD aprobado por la DG | Abastecimiento |  |
| 71 | 1.2.1.56 | Catálogo de Modalidad de Incorporación de Bienes (Catálogo Incorporación y Bajas) | manual | 56d | 2026-03-31 A | 2026-06-16 A | 100% |  | MFD aprobado por la DG | Abastecimiento |  |

Notes:
- 25: Propuesta: Vencida al 99 %. Se fija el cierre formal del MFD para que pueda usarse como insumo.
- 46: Propuesta: Vencida al 99 %. Se fija el cierre formal del MFD para que pueda usarse como insumo.
- 48: Propuesta: Debió iniciar antes del corte y sigue en 0 %. Se mueve el inicio al corte y se conserva la duración.
- 51: Propuesta: Debió iniciar antes del corte y sigue en 0 %. Se mueve el inicio al corte y se conserva la duración.
- 59: Propuesta: Vencida al 99 %. Se fija el cierre formal del MFD para que pueda usarse como insumo.
- 60: Propuesta: Vencida al 99 %. Se fija el cierre formal del MFD para que pueda usarse como insumo.
- 62: Propuesta: Vencida al 99 %. Se fija el cierre formal del MFD para que pueda usarse como insumo.
- 63: Propuesta: Vencida al 99 %. Se fija el cierre formal del MFD para que pueda usarse como insumo.

| ID | WBS | Task | Type | Duration | Start | Finish | Complete | Remaining | Sistema | Estado UCP | Cambio propuesto |
| --- | --- | --- | --- | --- | --- | --- | --- | --- | --- | --- | --- |
| 72 | 1.2.1.57 | Otros Catálogos: Marcas, colores, ubicación de artículos en almacén (SOLO COLORES) | manual | 56d | 2026-03-31 A | 2026-06-16 A | 100% |  | Abastecimiento | MFD aprobado por la DG |  |
| 73 | 1.2.1.58 | Catálogo estado físico de los bienes | manual | 30d | 2026-04-10 A | 2026-05-21 A | 100% |  | Abastecimiento | MFD por crear en Administrador de Catálogo |  |
| 74 | 1.2.1.59 | Catálogo de Motivos de Disposición de Bienes | manual | 56d | 2026-03-31 A | 2026-06-16 A | 100% |  | Abastecimiento | MFD por crear en Administrador de Catálogo |  |
| 75 | 1.2.1.60 | Catálogo de procesos de contratación (antes Catálogo de Modalidades de Contratación) | manual | 29d | 2026-03-02 A | 2026-04-09 A | 100% |  | Abastecimiento | MFD por crear en Administrador de Catálogo |  |
| 76 | 1.2.1.61 | Clasificador organizacional | manual | 67d | 2025-11-24 A | 2026-02-24 A | 100% |  | GFRH | En desarrollo- fábrica (Aprobados DG y OGTI) |  |
| 77 | 1.2.1.62 | Catálogo de Descriptivos de Datos Laborales | manual | 13d | 2026-02-23 A | 2026-03-11 A | 100% |  | GFRH | En desarrollo- fábrica (Aprobados DG y OGTI) |  |
| 78 | 1.2.1.63 | Catálogo de Descriptivos de Datos Personales | manual | 34d | 2026-02-11 A | 2026-03-30 A | 100% |  | GFRH | En desarrollo- fábrica (Aprobados DG y OGTI) |  |
| 79 | 1.2.1.64 | Catálogo de Conceptos de Ingresos | manual | 20d | 2026-03-12 A | 2026-04-08 A | 100% |  | GFRH | En desarrollo- fábrica (Aprobados DG y OGTI) |  |
| 80 | 1.2.1.65 | Catálogo de Conceptos de Descuentos y aportes | manual | 13d | 2026-03-12 A | 2026-03-30 A | 100% |  | GFRH | En desarrollo- fábrica (Aprobados DG y OGTI) |  |
| 81 | 1.2.1.66 | Catálogo GFRH por definir (antes «<Tarea nueva>») | manual | 63d | 2026-11-02 | 2027-01-27 |  |  | GFRH | MFD en elaboración | Reprogramar por avance real |
| 82 | 1.2.1.67 | Catálogo relacional Deuda Inversión | manual | 44d | 2026-11-02 | 2026-12-31 |  |  | Endeudamiento | Por actualizar |  |
| 83 | 1.2.1.68 | Catálogo de monedas | manual | 297d | 2023-11-13 A | 2024-12-31 A | 100% |  | Endeudamiento | MFD por crear en Administrador de Catálogo |  |
| 84 | 1.2.1.69 | Catálogo Único de Instrumentos de endeudamiento | manual | 320d | 2023-11-13 A | 2025-01-31 A | 100% |  | Endeudamiento | MFD por crear en Administrador de Catálogo |  |
| 85 | 1.2.1.70 | Clasificador de Acreedores (antes Organismos Financiadores) | manual | 360d | 2023-09-18 A | 2025-01-31 A | 100% |  | Endeudamiento | MFD por crear en Administrador de Catálogo |  |
| 86 | 1.2.1.71 | Catálogo de relación de ingresos con conceptos de deuda (Clasificador relacional conceptos de deuda) | manual | 62d | 2026-04-28 A | 2026-07-22 A | 100% |  | Endeudamiento | MFD aprobado por la DG |  |
| 87 | 1.2.1.72 | Catálogo de paises | manual | 49d | 2024-11-04 A | 2025-01-09 A | 100% |  | Endeudamiento | MFD por crear en Administrador de Catálogo |  |
| 88 | 1.2.1.73 | Catálogo de relación objeto del gasto con conceptos de deuda | manual | 65d | 2026-03-02 A | 2026-05-29 A | 100% |  | Endeudamiento | MFD aprobado por la DG |  |
| 89 | 1.2.1.74 | Catálogo de Continentes | manual | 22d | 2026-06-01 A | 2026-06-30 A | 100% |  | Endeudamiento | MFD por crear en Administrador de Catálogo |  |
| 90 | 1.2.1.75 | Catálogo de Relación Países con Monedas | manual | 22d | 2026-06-01 A | 2026-06-30 A | 100% |  | Endeudamiento | MFD aprobado por la DG |  |
| 91 | 1.2.1.76 | Catálogo de conceptos de deuda | manual | 22d | 2026-06-01 A | 2026-06-30 A | 100% |  | Endeudamiento | MFD por crear en Administrador de Catálogo |  |
| 92 | 1.2.1.77 | Catálogo Maestro de Listas de Concepto de Deuda | manual | 22d | 2026-06-01 A | 2026-06-30 A | 100% |  | Endeudamiento | MFD por crear en Administrador de Catálogo |  |
| 93 | 1.2.1.78 | Catálogo de Agrupación de Conceptos de Deuda | manual | 22d | 2026-06-01 A | 2026-06-30 A | 100% |  | Endeudamiento | MFD aprobado por la DG |  |
| 94 | 1.2.1.79 | Catálogo de Tipos de participantes del SNE | manual | 22d | 2026-06-01 A | 2026-06-30 A | 100% |  | Endeudamiento | MFD por crear en Administrador de Catálogo |  |
| 95 | 1.2.1.80 | Catálogo de Tipo de interés | manual | 22d | 2026-06-01 A | 2026-06-30 A | 100% |  | Endeudamiento | MFD aprobado por la DG |  |
| 96 | 1.2.1.81 | Catálogo detalle de Listas Generales | manual | 22d | 2026-06-01 A | 2026-06-30 A | 100% |  | Endeudamiento | MFD aprobado por la DG |  |
| 97 | 1.2.1.82 | Catálogo de Listas Generales | manual | 22d | 2026-06-01 A | 2026-06-30 A | 100% |  | Endeudamiento | MFD por crear en Administrador de Catálogo |  |
| 98 | 1.2.1.83 | Catálogos de Clases de Eventos | manual | 377d | 2024-02-01 A | 2025-07-11 A | 100% |  | Contabilidad | MFD por crear en Administrador de Catálogo |  |
| 99 | 1.2.1.84 | Plan de Cuentas Gubernamental Único | manual | 378d | 2023-09-11 A | 2025-02-19 A | 100% |  | Contabilidad | En desarrollo- fábrica (Aprobados DG y OGTI) |  |
| 100 | 1.2.1.85 | Catálogo de Métodos de Depreciación | manual | 47d | 2025-04-01 A | 2025-06-04 A | 100% |  | Contabilidad | MFD por crear en Administrador de Catálogo |  |
| 101 | 1.2.1.86 | Catálogo de etapas de eventos | manual | 377d | 2024-02-01 A | 2025-07-11 A | 100% |  | Contabilidad | MFD por crear en Administrador de Catálogo |  |
| 102 | 1.2.1.87 | Catálogo de Métodos de Amortización | manual | 18d | 2025-05-12 A | 2025-06-04 A | 100% |  | Contabilidad | MFD por crear en Administrador de Catálogo |  |
| 103 | 1.2.1.88 | Catálogo métodos de valuación de inventarios | manual | 3d | 2025-06-02 A | 2025-06-04 A | 100% |  | Contabilidad | MFD por crear en Administrador de Catálogo |  |
| 104 | 1.2.1.89 | Catálogo de Eventos | manual | 14d | 2025-06-24 A | 2025-07-11 A | 100% |  | Contabilidad | MFD aprobado por la DG |  |
| 105 | 1.2.1.90 | Catálogo de Eventos Contables | manual | 104d | 2025-07-31 A | 2025-12-23 A | 100% |  | Contabilidad | En desarrollo- fábrica (Aprobados DG y OGTI) |  |
| 106 | 1.2.1.91 | Catálogos de Conceptos para eventos contables | manual | 325d | 2024-04-15 A | 2025-07-11 A | 100% |  | Contabilidad | MFD por crear en Administrador de Catálogo |  |
| 107 | 1.2.1.92 | Catálogo de tipos de asientos de ajuste | manual | 72d | 2026-01-06 A | 2026-04-15 A | 100% |  | Contabilidad | En desarrollo- fábrica (Aprobados DG y OGTI) |  |
| 108 | 1.2.1.93 | Catálogos de Agregación y Consolidación Presupuestal | manual | 51d | 2027-08-12 | 2027-10-21 |  |  | Contabilidad | Sin iniciar |  |
| 109 | 1.2.1.94 | Catálogos de Agregación y Consolidación Contable | manual | 51d | 2027-08-12 | 2027-10-21 |  |  | Contabilidad | Sin iniciar |  |
| 110 | 1.2.1.95 | Clasificador de Entidades Financieras | manual | 137d | 2024-07-10 A | 2025-01-16 A | 100% |  | Tesorería | MFD por crear en Administrador de Catálogo |  |
| 111 | 1.2.1.96 | Catálogos: Movimientos Internos | manual | 99d | 2024-09-02 A | 2025-01-16 A | 100% |  | Tesorería | MFD por crear en Administrador de Catálogo |  |
| 112 | 1.2.1.97 | Catálogos: Movimientos Externos | manual | 99d | 2024-09-02 A | 2025-01-16 A | 100% |  | Tesorería | MFD por crear en Administrador de Catálogo |  |
| 113 | 1.2.1.98 | Catálogo de Medios de Percepción | manual | 98d | 2024-09-03 A | 2025-01-16 A | 100% |  | Tesorería | MFD por crear en Administrador de Catálogo |  |
| 114 | 1.2.1.99 | Catálogo de Aduanas | manual | 272d | 2024-01-03 A | 2025-01-16 A | 100% |  | Tesorería | MFD por crear en Administrador de Catálogo |  |
| 115 | 1.2.1.100 | Catálogo de Medios de Pago | manual | 76d | 2024-10-03 A | 2025-01-16 A | 100% |  | Tesorería | MFD por crear en Administrador de Catálogo |  |
| 116 | 1.2.1.101 | Consultas y Reportes - Clasificadores | manual | 247d | 2024-02-07 A | 2025-01-16 A | 100% |  | Tesorería | MFD por crear en Administrador de Catálogo |  |
| 117 | 1.2.1.102 | Clasificador de Cuentas Bancarias - Extractos - Libros Banco | manual | 364d | 2024-10-15 A | 2026-03-06 A | 100% |  | Tesorería | En desarrollo- fábrica (Aprobados DG y OGTI) |  |
| 118 | 1.2.1.103 | Cuentas de registro | manual | 74d | 2025-09-22 A | 2026-01-01 A | 100% |  | Tesorería | En desarrollo- fábrica (Aprobados DG y OGTI) |  |
| 119 | 1.2.1.104 | Catálogo de código tributario | manual | 74d | 2025-09-22 A | 2026-01-01 A | 100% |  | Tesorería | MFD por crear en Administrador de Catálogo |  |
| 120 | 1.2.1.105 | Catálogo de entes beneficiarios | manual | 84d | 2025-09-22 A | 2026-01-15 A | 100% |  | Tesorería | En desarrollo- fábrica (Aprobados DG y OGTI) |  |
| 121 | 1.2.1.106 | Tipo de cambio | manual | 120d | 2025-09-22 A | 2026-03-06 A | 100% |  | Tesorería | MFD por crear en Administrador de Catálogo |  |
| 122 | 1.2.1.107 | Catálogo de codigos de tributo con clasificador de ingresos | manual | 48d | 2025-10-28 A | 2026-01-01 A | 100% |  | Tesorería | MFD por crear en Administrador de Catálogo |  |
| 123 | 1.2.1.108 | Tablas paramétricas | manual | 22d | 2026-03-03 A | 2026-04-01 A | 100% |  | Tesorería | MFD por crear en Administrador de Catálogo |  |
| 124 | 1.2.1.109 | Catálogo Relacional de Documento de Operación con Movimiento Interno | manual | 1d | 2026-08-31 A | 2026-08-31 A | 100% |  | Tesorería | MFD por crear en Administrador de Catálogo |  |
| 125 | 1.2.1.110 | Consulta y reporte de la recaudación | manual | 1d | 2026-08-31 A | 2026-08-31 A | 100% |  | Tesorería | MFD aprobado por la DG |  |
| 126 | 1.2.1.111 | Organismos financiadores (antes Acreedores de Endeudamiento) | manual | 727d | 2023-09-18 A | 2026-06-30 A | 100% |  | Tesorería | MFD aprobado por la DG |  |
| 127 | 1.2.1.112 | Catálogo de ciudad país | manual | 116d | 2026-08-14 A | 2027-01-22 | 7% | 107.75d | Inversiones | StandBy |  |
| 128 | 1.2.1.113 | Catálogo Programas Presupuestales (Versión 2) | manual | 51d | 2026-11-16 | 2027-01-25 |  |  | Presupuesto | No figura en PMO |  |
| 129 | 1.2.1.114 | Catálogo Productos (Versión 2) | manual | 45d | 2026-10-26 | 2026-12-25 |  |  | Presupuesto | No figura en PMO |  |
| 130 | 1.2.1.115 | Catálogo Actividades (Versión 2) | manual | 55d | 2026-11-02 | 2027-01-15 |  |  | Presupuesto | No figura en PMO | Reprogramar por avance real |
| 131 | 1.2.1.116 | Clasificador Funcional (Versión 2) | manual | 35d | 2026-10-26 | 2026-12-11 |  |  | Presupuesto | No figura en PMO |  |
| 132 | 1.2.1.117 | Catálogo de Relación Actividad por Finalidad | manual | 80d | 2026-11-16 | 2027-03-05 |  |  | Presupuesto | No figura en PMO |  |
| 133 | 1.2.2 | C3 - Construcción de software | manual | 1d | 2023-09-11 | 2023-09-11 |  |  |  |  |  |

Notes:
- 81: Propuesta: Debió iniciar antes del corte y sigue en 0 %. Se mueve el inicio al corte y se conserva la duración.
- 130: Propuesta: Debió iniciar antes del corte y sigue en 0 %. Se mueve el inicio al corte y se conserva la duración.

| ID | WBS | Task | Type | Duration | Start | Finish | Predecessors | Complete | Remaining | Total slack | Estado UCP | Sistema | Cambio propuesto |
| --- | --- | --- | --- | --- | --- | --- | --- | --- | --- | --- | --- | --- | --- |
| 134 | 1.3 | **Macroproceso de Programación** |  | 708d? | 2025-09-15 A | 2028-05-31 |  | 42% | 413.72d? | 412d | En desarrollo |  |  |
| 135 | 1.3.1 | **Módulo de programación multianual presupuestaria** |  | 202d | 2026-09-07 A | 2027-06-15 |  | 11% | 180d |  |  | Presupuesto |  |
| 136 | 1.3.1.1 | Programación Multianual Presupuestaria - Generación de Reportes de la APM | manual | 76d | 2026-09-21 A | 2027-01-04 | 66FF | 24% | 57.76d |  | MFD en elaboración | Presupuesto |  |
| 137 | 1.3.1.2 | Programación Multianual Presupuestaria - Modificación de la APM | manual | 85d | 2026-09-07 A | 2027-01-01 | 65FF | 42% | 49.3d |  | MFD en elaboración | Presupuesto |  |
| 138 | 1.3.1.3 | Programación Multianual Presupuestal - Pliegos y UE (Desagregación) | manual | 78d | 2026-10-05 A | 2027-01-20 |  | 5% | 74.1d |  | Sin iniciar | Presupuesto |  |
| 139 | 1.3.1.4 | Proceso de Actualización Múltiple de EFP | manual | 82d | 2027-02-22 | 2027-06-15 |  |  |  |  | Sin iniciar | Presupuesto |  |
| 140 | 1.3.1.5 | Administrador de Metas | manual | 80d | 2026-12-01 | 2027-03-22 |  |  |  |  | Por validar | Presupuesto |  |
| 141 | 1.3.1.6 | Formulación del Presupuesto Público (DGPP MEF) | manual | 70d | 2026-10-14 | 2027-01-19 |  |  |  |  | Sin iniciar | Presupuesto |  |
| 142 | 1.3.1.7 | Aprobación Presupuestaria | manual | 60d | 2026-11-16 | 2027-02-05 |  |  |  |  | Sin iniciar | Presupuesto |  |
| 143 | 1.3.2 | **Módulo de formulación y aprobación del presupuesto** |  | 83d | 2026-10-14 A | 2027-02-05 |  | 3% | 80.77d |  |  | Presupuesto |  |
| 144 | 1.3.2.1 | Formulación del Presupuesto Público (DGPP MEF) | manual | 70d | 2026-10-14 A | 2027-01-19 | 388FF, 389FF, 391FF, 392FF | 5% | 66.5d |  | Sin iniciar | Presupuesto |  |
| 145 | 1.3.2.2 | Aprobación Presupuestaria | manual | 60d | 2026-11-16 | 2027-02-05 |  |  |  |  | Sin iniciar | Presupuesto |  |
| 146 | 1.3.3 | **Módulo Programación Inversiones SNPMGI para la AFSP** |  | 398d | 2025-12-22 A | 2027-06-30 |  | 47% | 209.33d |  |  | Inversiones |  |
| 147 | 1.3.3.1 | Elaboración de la PMI y PMIE | manual | 65d | 2026-09-01 A | 2026-12-04 |  | 62% | 24.95d |  | StandBy | Inversiones | Reactivar y extender |
| 148 | 1.3.3.2 | Clasificadores y Catálogos del SNPMGI para la AFSP- MOTOR | manual | 160d | 2025-12-22 A | 2026-07-31 A |  | 100% |  |  | MFD por crear en Administrador de Catálogo | Inversiones |  |
| 149 | 1.3.3.3 | Registro estructura del Proyecto y su relación con la Estructura Presupuestaria | manual | 45d | 2026-12-07 | 2027-02-05 | 147, 390 |  |  |  | No figura en PMO | Inversiones | Mover |
| 150 | 1.3.3.4 | Formulación Multianual del Presupuesto de cada Proyecto | manual | 65d | 2027-04-01 | 2027-06-30 | 149 |  |  |  | No figura en PMO | Inversiones |  |
| 151 | 1.3.3.5 | Gestión de activos | manual | 87d | 2027-01-11 | 2027-05-11 |  |  |  |  | Sin iniciar | Inversiones |  |
| 152 | 1.3.4 | **Módulo de Programación Multianual de Bienes, Servicios y Obras** |  | 174d | 2026-09-14 A | 2027-05-13 |  | 44% | 97.71d |  |  | Abastecimiento |  |
| 153 | 1.3.4.1 | CMN Programación | manual | 96d | 2026-09-14 A | 2027-01-25 |  | 65% | 33.6d |  | MFD en elaboración | Abastecimiento |  |
| 154 | 1.3.4.2 | CMN Ejecución versión 2 | manual | 78d | 2027-01-26 | 2027-05-13 |  |  |  |  | Sin iniciar | Abastecimiento |  |
| 155 | 1.3.4.3 | Elaboración de PAC | manual | 86d | 2026-09-14 A | 2027-01-11 |  | 60% | 34.4d |  | No figura en PMO | Abastecimiento |  |
| 156 | 1.3.5 | **Módulo de Programación multianual y formulación del presupuesto de ingresos del personal** |  | 194d | 2025-09-15 A | 2026-06-11 A |  | 100% |  |  |  | GFRH |  |
| 157 | 1.3.5.1 | Programación Multianual y Formulación del Presupuesto de Ingresos de Personal | manual | 194d | 2025-09-15 A | 2026-06-11 A |  | 100% |  |  | En desarrollo- fábrica (Aprobados DG y OGTI) | GFRH |  |

Notes:
- 147: Propuesta: Sale de StandBy el 2026-11-02; le quedan unos 25 días (38 % de 65). Es predecesora de 149.
- 149: Propuesta: Empieza cuando la PMI esté aprobada (147). Conserva su duración.

| ID | WBS | Task | Type | Duration | Start | Finish | Predecessors | Complete | Remaining | Actual start | Total slack | Constraint | Sistema | Estado UCP | Cambio propuesto |
| --- | --- | --- | --- | --- | --- | --- | --- | --- | --- | --- | --- | --- | --- | --- | --- |
| 158 | 1.3.6 | **Módulo de planeación financiera** |  | 578d | 2026-03-16 A | 2028-05-31 |  | 43% | 332.34d |  |  |  | Tesorería |  |  |
| 159 | 1.3.6.1 | Recursos Directamente Recaudados, Donaciones y Transferencias | manual | 165d | 2026-03-16 A | 2026-10-30 |  | 97% | 4.95d |  |  |  | Tesorería | MFD en elaboración |  |
| 160 | 1.3.6.2 | Recursos por Operaciones Oficiales de Crédito, Recursos Ordinarios y Recursos Determinados | manual | 94d | 2026-09-22 A | 2027-01-29 |  | 2% | 92.12d |  |  |  | Tesorería | MFD en elaboración |  |
| 161 | 1.3.6.3 | Flujos de caja proyectados mensual, trimestrales, anuales (estimación de egresos) | manual | 56d | 2027-02-01 | 2027-04-19 |  |  |  |  |  |  | Tesorería | No figura en PMO |  |
| 162 | 1.3.6.4 | Flujos de Caja Diarios (Insumo para la asignación de Cuotas de Pago) | manual | 43d | 2028-03-01 | 2028-04-28 | 161 |  |  |  |  |  | Tesorería | Sin iniciar |  |
| 163 | 1.3.6.5 | Asignación de pago – versión 2 (incorpora flujos de caja diarios) | manual | 23d | 2028-05-01 | 2028-05-31 | 162 |  |  |  |  |  | Tesorería | Sin iniciar | Sin cambio de fechas (pasa a v2) |
| 164 | 1.3.7 | **Módulo de Programación Multianual de Desembolsos y Pago de Obligaciones de Deuda.(PMEyPO)** |  | 153d? | 2026-07-01 A | 2027-01-29 |  | 57% | 66.55d? |  | 760d |  | Endeudamiento |  |  |
| 165 | 1.3.7.1 | Gestión de la programación de deuda (ROOC) (Configuración de Parametros Para la Programación Multianual de Deuda) |  | 153d | 2026-07-01 A | 2027-01-29 |  | 76% | 36.72d |  | 760d | finish no earlier than 2027-01-29 | Endeudamiento | MFD en elaboración |  |
| 166 | 1.3.7.2 | Proyeccion de Desembolsos | manual | 143d | 2026-07-15 A | 2027-01-29 |  | 64% | 51.48d |  |  |  | Endeudamiento | MFD en elaboración |  |
| 167 | 1.3.7.3 | **Proyección del servicio de la deuda** |  | 120d? | 2026-08-17 | 2027-01-29 |  | 47% | 63.6d? | 2026-12-15 |  |  | Endeudamiento | MFD en elaboración |  |
| 168 | 1.3.7.3.1 | Procedimiento: Consultas y reportes - Proyección del servicio de la deuda | manual | 34d | 2026-12-15 A | 2027-01-29 |  | 47% | 18.02d |  |  |  | Endeudamiento | Sin iniciar |  |
| 169 | 1.3.7.4 | Consolidación de Proyección de desembolsos y servicio de deuda (Consultas y reportes - Proyección de desembolsos) |  | 34d | 2026-12-15 | 2027-01-29 |  |  |  |  | 760d | start no earlier than 2026-12-15 | Endeudamiento | Sin iniciar |  |
| 170 | 1.3.7.5 | Programación de desembolsos de operaciones concertadas y por concertar |  | 77d | 2026-10-15 A | 2027-01-29 |  | 33% | 51.59d |  | 760d | finish no earlier than 2027-01-29 | Endeudamiento | MFD en elaboración |  |
| 171 | 1.4 | **Macroproceso de Gestión** |  | 1108d? | 2025-10-01 A | 2029-12-28 |  | 12% | 969.95d? |  |  |  |  | En desarrollo |  |
| 172 | 1.4.1 | **Módulo de Apertura del Ejercicio** |  | 45d | 2027-03-22 | 2027-05-21 |  |  |  |  |  |  | Presupuesto |  |  |
| 173 | 1.4.1.1 | Apertura del Ejercicio Fiscal | manual | 45d | 2027-03-22 | 2027-05-21 | 140FF, 132, 144, 145 |  |  |  |  |  | Presupuesto | Sin iniciar |  |
| 174 | 1.4.2 | **Módulo de Programación de la ejecución presupuestaria** |  | 43d | 2027-04-01 | 2027-05-31 |  |  |  |  |  |  | Presupuesto |  |  |
| 175 | 1.4.2.1 | Solicitud de Cuotas de Compromiso Nivel AU-UE-Pliegos | manual | 43d | 2027-04-01 | 2027-05-31 | 173SS |  |  |  |  |  | Presupuesto | Por validar |  |
| 176 | 1.4.2.2 | Asignación de Cuotas de Compromiso-Nivel DGGP-MEF | manual | 43d | 2027-04-01 | 2027-05-31 |  |  |  |  |  |  | Presupuesto | Por validar |  |
| 177 | 1.4.3 | **Módulo de Modificaciones presupuestarias** |  | 50d | 2027-05-24 | 2027-07-31 |  |  |  |  |  |  | Presupuesto |  |  |
| 178 | 1.4.3.1 | Modificaciones Presupuestarias en el nivel Institucional | manual | 45d | 2027-05-24 | 2027-07-23 |  |  |  |  |  |  | Presupuesto | Sin iniciar |  |
| 179 | 1.4.3.2 | Modificaciones presupuestarias en el nivel funcional programático | manual | 45d | 2027-06-01 | 2027-07-31 |  |  |  |  |  |  | Presupuesto | Sin iniciar |  |
| 180 | 1.4.4 | **Módulo de Ejecución presupuestaria** |  | 125d | 2027-06-01 | 2027-11-22 |  |  |  |  |  |  | Presupuesto |  |  |
| 181 | 1.4.4.1 | Compromiso de gastos de bienes, servicios y obras | manual | 45d | 2027-06-30 | 2027-08-31 | 377, 386, 175, 176 |  |  |  |  |  | Presupuesto | No figura en PMO | Mover y renombrar |
| 182 | 1.4.4.2 | Ejecución de gastos de gestión fiscal | manual | 44d | 2027-06-16 | 2027-08-15 | 377, 218 |  |  |  |  |  | Presupuesto | No figura en PMO |  |
| 183 | 1.4.4.3 | Ejecución presupuestaria de pasajes y viáticos | manual | 45d | 2027-07-26 | 2027-09-24 |  |  |  |  |  |  | Presupuesto | No figura en PMO |  |
| 184 | 1.4.4.4 | Ejecución presupuestaria de servicios públicos | manual | 45d | 2027-08-02 | 2027-10-01 |  |  |  |  |  |  | Presupuesto | No figura en PMO |  |
| 185 | 1.4.4.5 | Fondo rotatorio y caja chica | manual | 45d | 2027-08-02 | 2027-10-01 |  |  |  |  |  |  | Presupuesto | No figura en PMO |  |
| 186 | 1.4.4.6 | Ejecución de gastos de operaciones de endeudamiento | manual | 45d | 2027-09-24 | 2027-11-25 | 270FF, 272FF |  |  |  |  |  | Presupuesto | No figura en PMO | Mover |
| 187 | 1.4.4.7 | Ejecución presupuestaria de otros gastos | manual | 43d | 2027-09-23 | 2027-11-22 |  |  |  |  |  |  | Presupuesto | No figura en PMO |  |

Notes:
- 163: Propuesta: Se mantiene en mayo de 2028 como versión completa; ya no bloquea a los pagos de 2027.
- 181: Propuesta: Se diseña con la interfaz de la orden (M1) aprobada. Conserva su duración (45 días).
- 186: Propuesta: Debe cerrar junto con las instrucciones de pago de deuda (270 y 272). Conserva su duración.

| ID | WBS | Task | Type | Duration | Start | Finish | Predecessors | Complete | Remaining | Sistema | Estado UCP |
| --- | --- | --- | --- | --- | --- | --- | --- | --- | --- | --- | --- |
| 188 | 1.4.5 | **Módulo de gestión administrativa de inversiones** |  | 171d | 2027-01-04 | 2027-08-30 |  |  |  | Inversiones |  |
| 189 | 1.4.5.1 | Estructura de convenios de prestamos o donaciones | manual | 87d | 2027-01-04 | 2027-05-04 |  |  |  | Inversiones | No figura en PMO |
| 190 | 1.4.5.2 | Saldos iniciales de convenios de préstamos o donaciones | manual | 65d | 2027-04-01 | 2027-06-30 |  |  |  | Inversiones | No figura en PMO |
| 191 | 1.4.5.3 | Gestión de desembolsos | manual | 34d | 2027-02-01 | 2027-03-18 |  |  |  | Inversiones | MFD en elaboración |
| 192 | 1.4.5.4 | Notificación de pago | manual | 59d | 2027-06-01 | 2027-08-20 |  |  |  | Inversiones | No figura en PMO |
| 193 | 1.4.5.5 | Reportes especiales | manual | 43d | 2027-07-01 | 2027-08-30 |  |  |  | Inversiones | No figura en PMO |
| 194 | 1.4.6 | **Módulo de Gestión de adquisisiciones y otras formas de obtención** |  | 631d | 2027-01-12 A | 2029-06-12 |  | 4% | 607.67d | Abastecimiento |  |
| 195 | 1.4.6.1 | Actuaciones preparatorias | manual | 166d | 2027-01-12 A | 2027-08-31 | 377FF, 155, 153FF | 19% | 134.46d | Abastecimiento | MFD en elaboración |
| 196 | 1.4.6.2 | Generación de contrato, orden de compra y orden de servicio | manual | 101d | 2027-05-14 | 2027-10-01 |  |  |  | Abastecimiento | Sin iniciar |
| 197 | 1.4.6.3 | Conformidad | manual | 93d | 2027-09-01 | 2028-01-07 |  |  |  | Abastecimiento | Sin iniciar |
| 198 | 1.4.6.4 | Modificación de contratos – contratación complementaria | manual | 88d | 2028-01-10 | 2028-05-10 |  |  |  | Abastecimiento | Sin iniciar |
| 199 | 1.4.6.5 | Garantías y adelantos | manual | 82d | 2028-05-11 | 2028-09-01 |  |  |  | Abastecimiento | Sin iniciar |
| 200 | 1.4.6.6 | Resolución, nulidad y controversias | manual | 82d | 2028-09-04 | 2028-12-26 |  |  |  | Abastecimiento | Sin iniciar |
| 201 | 1.4.6.7 | Otras formas de obtención | manual | 121d | 2028-07-25 | 2029-01-09 |  |  |  | Abastecimiento | Sin iniciar |
| 202 | 1.4.6.8 | Regímenes especiales | manual | 120d | 2028-12-27 | 2029-06-12 |  |  |  | Abastecimiento | Sin iniciar |
| 203 | 1.4.7 | **Módulo de Gestión de almacén** |  | 1095d | 2025-10-01 A | 2029-12-11 |  | 33% | 732.89d | Abastecimiento |  |
| 204 | 1.4.7.1 | Logística de entrada | manual | 120d | 2029-01-10 | 2029-06-26 | 384 |  |  | Abastecimiento | Sin iniciar |
| 205 | 1.4.7.2 | Logística interna | manual | 120d | 2029-06-27 | 2029-12-11 |  |  |  | Abastecimiento | Por validar |
| 206 | 1.4.7.3 | Logística de salida | manual | 98d | 2029-06-13 | 2029-10-26 |  |  |  | Abastecimiento | Sin iniciar |
| 207 | 1.4.7.4 | Inventario masivo de existencias | manual | 167d | 2025-10-01 A | 2026-05-21 A |  | 100% |  | Abastecimiento | En desarrollo- INHOUSE (Aprobados DG y OGTI) |
| 208 | 1.4.8 | **Módulo de Gestión de bienes, propiedad, planta y equipo, intangibles y activos biológicos** |  | 211d | 2027-10-04 | 2028-07-24 |  |  |  | Abastecimiento |  |
| 209 | 1.4.8.1 | Gestión de control de bienes muebles patrimoniales | manual | 91d | 2027-10-04 | 2028-02-07 |  |  |  | Abastecimiento | Por validar |
| 210 | 1.4.8.2 | Gestión de inventarios, incorporaciones y bajas | manual | 120d | 2028-02-08 | 2028-07-24 |  |  |  | Abastecimiento | Sin iniciar |
| 211 | 1.4.9 | **Módulo de gestión de ingresos del personal** |  | 183d | 2025-10-27 A | 2026-07-08 A |  | 100% |  | GFRH |  |
| 212 | 1.4.9.1 | Gestión de Estructura de Recursos Humanos | manual | 36d | 2026-03-20 A | 2026-05-08 A |  | 100% |  | GFRH | En desarrollo- fábrica (Aprobados DG y OGTI) |
| 213 | 1.4.9.2 | Gestión de Ocupantes | manual | 33d | 2026-04-16 A | 2026-05-30 A |  | 100% |  | GFRH | En desarrollo- fábrica (Aprobados DG y OGTI) |
| 214 | 1.4.9.3 | Gestión de la Negociación Colectiva | manual | 41d | 2026-05-13 A | 2026-07-08 A |  | 100% |  | GFRH | En desarrollo- fábrica (Aprobados DG y OGTI) |
| 215 | 1.4.9.4 | Gestión del Expediente del Ocupante de Posición | manual | 134d | 2025-10-27 A | 2026-04-30 A |  | 100% |  | GFRH | En desarrollo- fábrica (Aprobados DG y OGTI) |

| ID | WBS | Task | Type | Duration | Start | Finish | Predecessors | Complete | Remaining | Sistema | Estado UCP |
| --- | --- | --- | --- | --- | --- | --- | --- | --- | --- | --- | --- |
| 216 | 1.4.10 | **Módulo de planillas del sector público** |  | 131d | 2026-04-01 A | 2026-09-30 A |  | 100% |  | GFRH |  |
| 217 | 1.4.10.1 | Gestión de Descuentos y Aportes | manual | 88d | 2026-04-01 A | 2026-07-31 A |  | 100% |  | GFRH | En desarrollo- fábrica (Aprobados DG y OGTI) |
| 218 | 1.4.10.2 | Configuración y Generación de Planillas de Pagos | manual | 109d | 2026-04-29 A | 2026-09-28 A |  | 100% |  | GFRH | MFD aprobado por la DG |
| 219 | 1.4.10.3 | Reversión de Planillas de Pago | manual | 42d | 2026-06-05 A | 2026-08-03 A |  | 100% |  | GFRH | En desarrollo- fábrica (Aprobados DG y OGTI) |
| 220 | 1.4.10.4 | Validación de Planillas Procesadas en Sistemas Propios de Entidades | manual | 90d | 2026-05-28 A | 2026-09-30 A |  | 100% |  | GFRH | MFD aprobado por la DG |
| 221 | 1.4.11 | **Gestión de Ingresos** |  | 356d | 2026-08-03 A | 2027-12-13 |  | 3% | 343.67d | Tesorería |  |
| 222 | 1.4.11.1 | Ingresos tributarios SUNAT | manual | 15d | 2026-08-03 A | 2026-08-21 A |  | 100% |  | Tesorería | En desarrollo- fábrica (Aprobados DG y OGTI) |
| 223 | 1.4.11.2 | Notas de ajuste y Penalidades | manual | 45d | 2027-04-20 | 2027-06-21 |  |  |  | Tesorería | MFD en elaboración / MFD en elaboración |
| 224 | 1.4.11.3 | Ingresos aduaneros SUNAT | manual | 65d | 2027-01-19 | 2027-04-19 |  |  |  | Tesorería | MFD en elaboración |
| 225 | 1.4.11.4 | Gestión de Ingresos no tributarios y otros ingresos (incluye transferencias) | manual | 67d | 2027-04-20 | 2027-07-21 |  |  |  | Tesorería | Sin iniciar |
| 226 | 1.4.11.5 | Gestión de Ingreso por Donaciones dinerarias | manual | 65d | 2027-01-19 | 2027-04-19 |  |  |  | Tesorería | Sin iniciar |
| 227 | 1.4.11.6 | Gestión de Ingreso impuestos Municipales | manual | 51d | 2027-07-22 | 2027-09-30 |  |  |  | Tesorería | Sin iniciar |
| 228 | 1.4.11.7 | Ejecución de Ingreso recaudado simultaneo (Para Entidades que recaudan, se incorpora a SUNAT como nuevo proceso administrativo) | manual | 59d | 2027-06-22 | 2027-09-10 |  |  |  | Tesorería | No figura en PMO |
| 229 | 1.4.11.8 | Ejecución de Ingreso determinado - recaudado incluye el motor automático de generación de documentos de Ingresos - determinado - recaudado | manual | 66d | 2027-09-13 | 2027-12-13 |  |  |  | Tesorería | No figura en PMO |
| 230 | 1.4.12 | **Gestión de pagos** |  | 292d | 2027-04-20 | 2028-05-31 |  |  |  | Tesorería |  |
| 231 | 1.4.12.1 | Administrar de Consola de Facturas | manual | 66d | 2027-12-14 | 2028-03-14 |  |  |  | Tesorería | Sin iniciar |
| 232 | 1.4.12.2 | Acreditación y autorización del responsable | manual | 44d | 2027-04-20 | 2027-06-18 |  |  |  | Tesorería | No figura en PMO |
| 233 | 1.4.12.3 | Gestión de Pago por Medio de pago Cheque | manual | 52d | 2027-09-20 | 2027-11-30 | 376 |  |  | Tesorería | No figura en PMO |
| 234 | 1.4.12.4 | Operativización del Pago con Entidades Financieras y confirmación de la recepción de fondos (pagado) | manual | 65d | 2027-06-21 | 2027-09-17 | 376, 377 |  |  | Tesorería | No figura en PMO |
| 235 | 1.4.12.5 | Gestion de Pago por medio de pago transferencia | manual | 56d | 2028-03-15 | 2028-05-31 | 376 |  |  | Tesorería | No figura en PMO |
| 236 | 1.4.12.6 | Gestión de pagos con medio de Pago Entre CUT | manual | 66d | 2027-06-16 | 2027-09-15 | 376, 377 |  |  | Tesorería | No figura en PMO |
| 237 | 1.4.12.7 | Gestión de Pago por Medio de pago Documentos Valorados | manual | 64d | 2027-12-01 | 2028-02-28 |  |  |  | Tesorería | No figura en PMO |
| 238 | 1.4.12.8 | Cesión de derechos | manual | 64d | 2027-12-01 | 2028-02-28 |  |  |  | Tesorería | Por validar |
| 239 | 1.4.12.9 | Gestión de deducciones, retenciones y embargos | manual | 43d | 2027-10-01 | 2027-11-30 |  |  |  | Tesorería | Sin iniciar |

| ID | WBS | Task | Type | Duration | Start | Finish | Predecessors | Complete | Remaining | Sistema | Estado UCP | Cambio propuesto |
| --- | --- | --- | --- | --- | --- | --- | --- | --- | --- | --- | --- | --- |
| 240 | 1.4.13 | **Módulo de gestión de liquidez** |  | 483d | 2026-07-24 A | 2028-05-30 |  | 19% | 389.46d | Tesorería |  |  |
| 241 | 1.4.13.1 | Registro de Operación Bancaria | manual | 21d | 2026-07-24 A | 2026-08-21 A |  | 100% |  | Tesorería | En desarrollo- INHOUSE (Aprobados DG y OGTI) |  |
| 242 | 1.4.13.2 | Gestión de Conciliación bancaria de Ingresos Fase 1: Conciliación | manual | 21d | 2026-07-24 A | 2026-08-21 A |  | 100% |  | Tesorería | En desarrollo- INHOUSE (Aprobados DG y OGTI) |  |
| 243 | 1.4.13.3 | Registro de Saldos Iniciales en Libro Banco y Libreta de Cuentas de Registro (ajuste - manual - automático) | manual | 50d | 2026-08-24 A | 2026-10-30 |  | 96% | 2d | Tesorería | MFD en elaboración |  |
| 244 | 1.4.13.4 | Registro de operaciones en la Libreta de Cuenta de Registro | manual | 50d | 2026-08-24 A | 2026-10-30 |  | 96% | 2d | Tesorería | MFD en elaboración |  |
| 245 | 1.4.13.5 | Conciliación bancaria Manual (ajustes manuales autorizados - transacciones con el LBTR) Vs 1.0 | manual | 72d | 2026-09-22 A | 2026-12-30 |  | 9% | 65.52d | Tesorería | MFD en elaboración |  |
| 246 | 1.4.13.6 | Gestión de Conciliación bancaria de Ingresos Fase 2: Conciliación | manual | 66d | 2027-03-16 | 2027-06-15 |  |  |  | Tesorería | No figura en PMO |  |
| 247 | 1.4.13.7 | Gestión de Conciliación bancaria de Pagos | manual | 65d | 2027-09-16 | 2027-12-15 |  |  |  | Tesorería | Sin iniciar |  |
| 248 | 1.4.13.8 | Gestión de Conciliación bancaria integrada | manual | 65d | 2027-12-16 | 2028-03-15 |  |  |  | Tesorería | No figura en PMO |  |
| 249 | 1.4.13.9 | Traspasos entre cuentas bancarias | manual | 52d | 2027-01-01 | 2027-03-15 |  |  |  | Tesorería | MFD en elaboración |  |
| 250 | 1.4.13.10 | Traspasos entre cuentas de registros | manual | 78d | 2026-11-02 | 2027-02-17 |  |  |  | Tesorería | No figura en PMO | Reprogramar por avance real |
| 251 | 1.4.13.11 | Gestión de Documentos Valorados | manual | 86d | 2026-11-02 | 2027-03-01 |  |  |  | Tesorería | Sin iniciar | Reprogramar por avance real |
| 252 | 1.4.13.12 | Gestionar la Rentabilización de los Recursos | manual | 66d | 2028-02-29 | 2028-05-30 |  |  |  | Tesorería | Sin iniciar |  |
| 253 | 1.4.13.13 | Gestionar las Inversiones Financieras | manual | 54d | 2028-03-16 | 2028-05-30 |  |  |  | Tesorería | Sin iniciar |  |
| 254 | 1.4.14 | **ENDEUDAMIENTO - PRIMERA ETAPA** |  | 409d? | 2026-12-01 | 2028-06-25 |  |  |  | Endeudamiento |  |  |
| 255 | 1.4.14.1 | **Gestión de concertación y operaciones de endeudamiento** |  | 109d? | 2026-12-01 | 2027-04-30 |  |  |  | Endeudamiento |  |  |
| 256 | 1.4.14.1.1 | **Gestion de Concertación préstamos de DI y DE** |  | 109d | 2026-12-01 | 2027-04-30 |  |  |  | Endeudamiento | Sin iniciar |  |
| 257 | 1.4.14.1.1.1 | Procedimiento: Administración de Techos de Endeudamiento (Ley del SNE) | manual | 109d? | 2026-12-01 | 2027-04-30 | 390 |  |  | Endeudamiento | Sin iniciar |  |
| 258 | 1.4.14.1.2 | Gestion de Emisiones de Valores de Deuda Publica DI y DE | manual | 109d? | 2026-12-01 | 2027-04-30 |  |  |  | Endeudamiento | Sin iniciar |  |
| 259 | 1.4.14.1.3 | Gestion de Titulizacion de Activos | manual | 109d? | 2026-12-01 | 2027-04-30 |  |  |  | Endeudamiento | Sin iniciar |  |
| 260 | 1.4.14.1.4 | Gestion de garantías (avales y fianzas) | manual | 109d? | 2026-12-01 | 2027-04-30 |  |  |  | Endeudamiento | Sin iniciar |  |
| 261 | 1.4.14.1.5 | Gestión de Adendas | manual | 109d? | 2026-12-01 | 2027-04-30 |  |  |  | Endeudamiento | Sin iniciar |  |
| 262 | 1.4.14.2 | **Modulo de Asignación de Desembolsos/Colocaciones a la Op. De Endeudamiento y otros** |  | 131d? | 2027-04-01 | 2027-09-30 |  |  |  | Endeudamiento | Sin iniciar |  |
| 263 | 1.4.14.2.1 | **Conciliación de desembolsos UEs / Acreedor** |  | 65d | 2027-04-01 | 2027-06-30 |  |  |  | Endeudamiento | Sin iniciar |  |
| 264 | 1.4.14.2.1.1 | Procedimiento: Registro y asignación de desembolso ejecutado por préstamos | manual | 88d? | 2027-04-01 | 2027-07-31 |  |  |  | Endeudamiento | Sin iniciar |  |
| 265 | 1.4.14.2.1.2 | Procedimiento: Registro de colocación de bonos y sus condiciones financieras | manual | 88d? | 2027-04-01 | 2027-07-31 |  |  |  | Endeudamiento | Sin iniciar |  |
| 266 | 1.4.14.2.1.3 | Procedimiento: Reporte del saldo por desembolsar | manual | 88d? | 2027-04-01 | 2027-07-31 |  |  |  | Endeudamiento | Sin iniciar |  |
| 267 | 1.4.14.2.1.4 | Procedimiento: Consultas y reportes desembolsos | manual | 66d? | 2027-07-01 | 2027-09-30 |  |  |  | Endeudamiento | Sin iniciar |  |
| 268 | 1.4.14.2.2 | Gestión de regularizaciones de ingresos/ cancelaciones | manual | 109d? | 2027-04-01 | 2027-08-31 |  |  |  | Endeudamiento | Sin iniciar |  |

Notes:
- 250: Propuesta: Debió iniciar antes del corte y sigue en 0 %. Se mueve el inicio al corte y se conserva la duración.
- 251: Propuesta: Debió iniciar antes del corte y sigue en 0 %. Se mueve el inicio al corte y se conserva la duración.

| ID | WBS | Task | Type | Duration | Start | Finish | Sistema | Estado UCP |
| --- | --- | --- | --- | --- | --- | --- | --- | --- |
| 269 | 1.4.14.3 | **Ejecución del compromiso - devengado para el pago del servicio de la deuda(Consolidación (insumo) de información para el pago servicio de deuda)** |  | 105d? | 2027-07-02 | 2027-11-25 | Endeudamiento | Sin iniciar |
| 270 | 1.4.14.3.1 | Preparación, emisión y autorizaciones de Instrucciones para el pago Deuda externa | manual | 105d? | 2027-07-02 | 2027-11-25 | Endeudamiento | Sin iniciar |
| 271 | 1.4.14.3.2 | **Preparación, emisión y autorizaciones de Instrucciones de pago deuda interna** |  | 105d | 2027-07-02 | 2027-11-25 | Endeudamiento | Sin iniciar |
| 272 | 1.4.14.3.2.1 | Procedimiento: Actualización del abono por pago de deuda | manual | 105d | 2027-07-02 | 2027-11-25 | Endeudamiento | Sin iniciar |
| 273 | 1.4.14.3.2.2 | Procedimiento: Consultas y Reportes del Pago del Servicio de la deuda | manual | 105d? | 2027-07-02 | 2027-11-25 | Endeudamiento | Sin iniciar |
| 274 | 1.4.14.4 | **Módulo de Gestión de cuentas (créditos) por cobrar** |  | 154d? | 2027-07-28 | 2028-02-28 | Endeudamiento | Sin iniciar |
| 275 | 1.4.14.4.1 | **Gestión de cuentas (créditos) por cobrar** |  | 154d? | 2027-07-28 | 2028-02-28 | Endeudamiento | Sin iniciar |
| 276 | 1.4.14.4.1.1 | Procedimiento: Emisión de notificación de cobranza | manual | 94d? | 2027-07-28 | 2027-12-06 | Endeudamiento | Sin iniciar |
| 277 | 1.4.14.4.1.2 | Procedimiento: Actualización del saldo adeudado del crédito por cobrar | manual | 60d? | 2027-12-07 | 2028-02-28 | Endeudamiento | Sin iniciar |
| 278 | 1.4.14.5 | **Módulo de Gestión de Op. Endeudamiento - GSN** |  | 346d? | 2026-12-01 | 2028-03-28 | Endeudamiento | Sin iniciar |
| 279 | 1.4.14.5.1 | **Gestión de desembolsos (antes gestión administrativa de proyectos con financiamiento externo)** |  | 56d | 2027-02-12 | 2027-04-30 | Endeudamiento | Sin iniciar |
| 280 | 1.4.14.5.1.1 | Procedimiento: Registro de contratos / convenios deuda Gobierno Subnacionales (GSN) | manual | 50d? | 2026-12-01 | 2027-02-08 | Endeudamiento | Sin iniciar |
| 281 | 1.4.14.5.1.2 | Procedimiento: Seguimiento – Reportes especiales (incluye la justificación de gastos) | manual | 57d? | 2027-02-12 | 2027-05-01 | Endeudamiento | Sin iniciar |
| 282 | 1.4.14.5.1.3 | Procedimiento: Registro de estructura de convenios de financiamiento externo (Registro y actualización de contratos de proyectos con financiamiento externo) | manual | 57d? | 2027-02-12 | 2027-05-02 | Endeudamiento | Sin iniciar |
| 283 | 1.4.14.5.1.4 | Procedimiento: Generación del servicio de la deuda - GSN | manual | 76d? | 2027-06-17 | 2027-09-30 | Endeudamiento | Sin iniciar |
| 284 | 1.4.14.5.2 | **Programación de pago de deuda - GSN** |  | 74d | 2027-08-12 | 2027-11-23 | Endeudamiento | Sin iniciar |
| 285 | 1.4.14.5.2.1 | Procedimiento: Registro de Pagos deuda- GSN | manual | 87d? | 2027-11-24 | 2028-03-23 | Endeudamiento | Sin iniciar |
| 286 | 1.4.14.5.2.2 | Procedimiento: Consultas y reportes operativos deuda - GSN | manual | 62d? | 2028-01-03 | 2028-03-28 | Endeudamiento | Sin iniciar |
| 287 | 1.4.14.6 | **Módulo Estadísticas de deuda** |  | 95d? | 2028-02-14 | 2028-06-25 | Endeudamiento | Sin iniciar |
| 288 | 1.4.14.6.1 | Generación de Estadísticas de deuda del sector público | manual | 81d? | 2028-02-14 | 2028-06-03 | Endeudamiento | Sin iniciar |
| 289 | 1.4.14.6.2 | Generación del Saldo y perfil de la Deuda Pública Externa e Interna | manual | 96d? | 2028-02-14 | 2028-06-25 | Endeudamiento | Sin iniciar |
| 290 | 1.4.15 | **ENDEUDAMIENTO - SEGUNDA ETAPA - Otros procesos de gestión de recursos - SNE GN - DGTP** |  | 715d? | 2027-04-05 | 2029-12-28 | Endeudamiento | Sin iniciar |
| 291 | 1.4.15.1 | **Generación de cronograma de Servicio de deuda** |  | 642d? | 2027-07-15 | 2029-12-28 | Endeudamiento | Sin iniciar |
| 292 | 1.4.15.1.1 | **Generación Cronograma de servicio autogenerado (principal, interés, comisión)** |  | 138d | 2027-08-01 | 2028-02-08 | Endeudamiento | Sin iniciar |
| 293 | 1.4.15.1.1.1 | Cálculos y generación de carga financiera devengada por cronograma de servicio | manual | 104d? | 2028-06-09 | 2028-11-01 | Endeudamiento | Sin iniciar |
| 294 | 1.4.15.1.1.2 | Generacion del costo amortizado | manual | 63d? | 2028-12-02 | 2029-02-27 | Endeudamiento | Sin iniciar |
| 295 | 1.4.15.1.1.3 | Mantenimiento de parámetros para cálculos cronograma | manual | 61d? | 2029-03-28 | 2029-06-20 | Endeudamiento | Sin iniciar |
| 296 | 1.4.15.1.1.4 | Registro manual de cronograma de servicio | manual | 94d? | 2029-08-21 | 2029-12-28 | Endeudamiento | Sin iniciar |

| ID | WBS | Task | Type | Duration | Start | Finish | Sistema | Estado UCP |
| --- | --- | --- | --- | --- | --- | --- | --- | --- |
| 297 | 1.4.15.1.2 | **Generación de Aplicaciones por tasas variables (vencimiento pagado)** |  | 109d | 2027-07-15 | 2027-12-14 | Endeudamiento | Sin iniciar |
| 298 | 1.4.15.1.2.1 | Cronograma de servicio de coberturas | manual | 66d? | 2027-12-15 | 2028-03-15 | Endeudamiento | Sin iniciar |
| 299 | 1.4.15.1.3 | Traslado de saldos adeudados | manual | 74d? | 2028-04-25 | 2028-08-04 | Endeudamiento | Sin iniciar |
| 300 | 1.4.15.1.4 | **Registro de acuerdo de pago** |  | 94d | 2028-08-07 | 2028-12-14 | Endeudamiento | Sin iniciar |
| 301 | 1.4.15.1.4.1 | Registro y generación de proyecciones de Tasas de tipos de interés(SOFR y otras) | manual | 79d? | 2028-09-15 | 2029-01-03 | Endeudamiento | Sin iniciar |
| 302 | 1.4.15.1.4.2 | Simulador de índices proyectados (caso BID) | manual | 59d? | 2029-08-06 | 2029-10-25 | Endeudamiento | Sin iniciar |
| 303 | 1.4.15.1.4.3 | Tasa de rendimiento promedio ponderada (Bonos) | manual | 74d? | 2027-12-07 | 2028-03-17 | Endeudamiento | Sin iniciar |
| 304 | 1.4.15.1.4.4 | Consultas operativas de Servicio proyectado(3), Saldos adeudados (3), coberturas (3), Desembolsos (3) y Pagos(3) | manual | 96d? | 2028-06-20 | 2028-10-31 | Endeudamiento | Sin iniciar |
| 305 | 1.4.15.2 | **Módulo de Programación de vencimiento** |  | 392d? | 2028-03-30 | 2029-09-29 | Endeudamiento | Sin iniciar |
| 306 | 1.4.15.2.1 | **Generación de vencimientos deuda para liquidación** |  | 59d | 2028-07-12 | 2028-09-30 | Endeudamiento | Sin iniciar |
| 307 | 1.4.15.2.1.1 | Mantenimiento de parámetros para Liquidaciones | manual | 89d? | 2028-06-29 | 2028-10-31 | Endeudamiento |  |
| 308 | 1.4.15.2.1.2 | Mantenimiento de cuentas bancarias del acreedor | manual | 31d? | 2028-03-30 | 2028-05-11 | Endeudamiento |  |
| 309 | 1.4.15.2.2 | Preparación y generación de Liquidaciones y Órdenes de pago (digital) | manual | 90d? | 2029-01-02 | 2029-05-06 | Endeudamiento | Sin iniciar |
| 310 | 1.4.15.2.3 | Generación de información de deuda (Cómite de Caja) | manual | 61d? | 2029-07-09 | 2029-09-29 | Endeudamiento | Sin iniciar |
| 311 | 1.4.15.2.4 | Gestión de autorizaciones de Liq. y Ordenes de pago | manual | 41d? | 2029-07-30 | 2029-09-24 | Endeudamiento | Sin iniciar |
| 312 | 1.4.15.3 | **Gestión de Operaciones de Administración de deuda** |  | 173d? | 2028-07-26 | 2029-03-23 | Endeudamiento | Sin iniciar |
| 313 | 1.4.15.3.1 | Convenios de operaciones de administración de deuda (Reestructuración/ Refinanciación/ Prepagos/ Canje/ Recompra/ Conversión) | manual | 89d? | 2028-07-26 | 2028-11-27 | Endeudamiento | Sin iniciar |
| 314 | 1.4.15.3.2 | Contratación de Cobertura de riesgos | manual | 84d? | 2028-11-28 | 2029-03-23 | Endeudamiento | Sin iniciar |
| 315 | 1.4.15.4 | **Módulo de Gestión de créditos por cobrar** |  | 308d? | 2028-10-24 | 2029-12-27 | Endeudamiento | Sin iniciar |
| 316 | 1.4.15.4.1 | **Registro de convenio de cuentas por cobrar** |  | 308d | 2028-10-24 | 2029-12-27 | Endeudamiento | Sin iniciar |
| 317 | 1.4.15.4.1.1 | Cronograma de servicio (amortización, interés y comisión) de cuentas por cobrar | manual | 106d? | 2028-10-24 | 2029-03-20 | Endeudamiento | Sin iniciar |
| 318 | 1.4.15.4.1.2 | Preparar datos - período de cobranza | manual | 36d? | 2029-07-23 | 2029-09-08 | Endeudamiento | Sin iniciar |
| 319 | 1.4.15.4.1.3 | Vencimientos aprobados - cobranza | manual | 59d? | 2029-07-09 | 2029-09-27 | Endeudamiento | Sin iniciar |
| 320 | 1.4.15.4.1.4 | Consultas de la ejecución de la cobranza | manual | 46d? | 2029-07-28 | 2029-09-28 | Endeudamiento | Sin iniciar |

| ID | WBS | Task | Type | Duration | Start | Finish | Complete | Remaining | Sistema | Estado UCP |
| --- | --- | --- | --- | --- | --- | --- | --- | --- | --- | --- |
| 321 | 1.4.15.4.2 | **Registro del fideicomiso y condiciones** |  | 45d | 2029-05-22 | 2029-07-21 |  |  | Endeudamiento | Sin iniciar |
| 322 | 1.4.15.4.2.1 | Cronograma y estado de los fideicomisos | manual | 42d? | 2029-05-26 | 2029-07-21 |  |  | Endeudamiento | Sin iniciar |
| 323 | 1.4.15.4.2.2 | Ficha resumen y consultas de fideicomisos | manual | 38d? | 2029-05-22 | 2029-07-12 |  |  | Endeudamiento | Sin iniciar |
| 324 | 1.4.15.4.3 | Registro del Patrimonio y cuentas | manual | 42d? | 2029-05-27 | 2029-07-22 |  |  | Endeudamiento | Sin iniciar |
| 325 | 1.4.15.5 | **Módulo de Procesos de especiales de deuda** |  | 390d? | 2028-03-08 | 2029-09-04 |  |  | Endeudamiento | Sin iniciar |
| 326 | 1.4.15.5.1 | **Consolidación del Estado de la deuda** |  | 390d? | 2028-03-08 | 2029-09-04 |  |  | Endeudamiento | Sin iniciar |
| 327 | 1.4.15.5.1.1 | Carga financiera devengada y costo amortizado | manual | 54d? | 2029-05-26 | 2029-08-08 |  |  | Endeudamiento |  |
| 328 | 1.4.15.5.1.2 | Regularizaciones / waivers | manual | 64d? | 2029-04-09 | 2029-07-05 |  |  | Endeudamiento |  |
| 329 | 1.4.15.5.1.3 | Saldo por desembolsar | manual | 51d? | 2028-03-08 | 2028-05-17 |  |  | Endeudamiento |  |
| 330 | 1.4.15.5.1.4 | Generación de saldos iniciales del año para cada COE / Tramo / Pagador | manual | 74d? | 2029-05-24 | 2029-09-04 |  |  | Endeudamiento |  |
| 331 | 1.4.15.5.1.5 | Control de cierre contable mensual | manual | 34d? | 2029-03-05 | 2029-04-19 |  |  | Endeudamiento |  |
| 332 | 1.4.15.5.1.6 | Ajustes contables - Diferencia de cambio | manual | 35d | 2029-02-20 | 2029-04-09 |  |  | Endeudamiento |  |
| 333 | 1.4.15.6 | **Gestión de Garantías Promoción de la Inversión Privada mediante APPs** |  | 301d? | 2027-04-05 | 2028-05-29 |  |  | Endeudamiento | Sin iniciar |
| 334 | 1.4.15.6.1 | Administración de garantías APPs | manual | 64d? | 2027-04-05 | 2027-07-01 |  |  | Endeudamiento | Sin iniciar |
| 335 | 1.4.15.6.2 | **Ejecución de garantías** |  | 237d | 2027-07-02 | 2028-05-29 |  |  | Endeudamiento | Sin iniciar |
| 336 | 1.4.15.6.2.1 | Consultas y reportes de garantías | manual | 69d? | 2028-02-23 | 2028-05-29 |  |  | Endeudamiento |  |
| 337 | 1.4.15.6.2.2 | Control de garantías | manual | 99d? | 2027-10-07 | 2028-02-22 |  |  | Endeudamiento |  |
| 338 | 1.4.15.7 | **Gestión de inversiones (acciones, suscripción, aportaciones)** |  | 257d? | 2028-05-30 | 2029-05-23 |  |  | Endeudamiento | Sin iniciar |
| 339 | 1.4.15.7.1 | Administración de Contribuciones y Aportaciones | manual | 94d? | 2028-10-09 | 2029-02-15 |  |  | Endeudamiento | Sin iniciar |
| 340 | 1.4.15.7.2 | Administración de Reparto de Utilidades y Dividendo Acción | manual | 69d? | 2029-02-16 | 2029-05-23 |  |  | Endeudamiento | Sin iniciar |
| 341 | 1.4.15.7.3 | Administración de Suscripción de acciones | manual | 94d? | 2028-05-30 | 2028-10-06 |  |  | Endeudamiento | Sin iniciar |
| 342 | 1.4.16 | **Módulo de servicios de contabilización** |  | 758d | 2025-10-29 A | 2028-09-22 | 72% | 211.17d | Contabilidad |  |
| 343 | 1.4.16.1 | Contabilización automática de las transacciones | manual | 85d | 2025-12-04 A | 2026-04-01 A | 100% |  | Contabilidad | MFD aprobado por la DG |
| 344 | 1.4.16.2 | Integración de operaciones SIAF RP - SIAF SP (NUEVO) | manual | 111d | 2025-10-29 A | 2026-04-01 A | 100% |  | Contabilidad | MFD aprobado por la DG |
| 345 | 1.4.16.3 | Contabilización de asientos manuales | manual | 50d | 2026-03-30 A | 2026-06-05 A | 100% |  | Contabilidad | MFD aprobado por la DG |
| 346 | 1.4.16.4 | Actualización 1 de Catálogo de Eventos y Motor de Contabilización | manual | 50d | 2027-06-08 | 2027-08-15 |  |  | Contabilidad | No figura en PMO |
| 347 | 1.4.16.5 | Actualización 2 de Catálogo de Eventos y Motor de Contabilización | manual | 45d | 2028-07-24 | 2028-09-22 |  |  | Contabilidad | No figura en PMO |

| ID | WBS | Task | Type | Duration | Start | Finish | Predecessors | Complete | Remaining | Estado UCP | Sistema | Cambio propuesto | Código propuesta |
| --- | --- | --- | --- | --- | --- | --- | --- | --- | --- | --- | --- | --- | --- |
| 348 | 1.5 | **Macroproceso de Evaluación** |  | 656d | 2026-03-13 A | 2028-09-16 |  | 12% | 580.11d | En desarrollo |  |  |  |
| 349 | 1.5.1 | **Módulo de gestión administrativa de inversiones** |  | 130d | 2027-08-01 | 2028-01-29 |  |  |  |  | Inversiones |  |  |
| 350 | 1.5.1.1 | Seguimiento Físico y Financiero e Indicadores de la Inversión – Indice de Desempeño | manual | 87d | 2027-08-01 | 2027-11-29 | 193FF |  |  | Sin iniciar | Inversiones |  |  |
| 351 | 1.5.1.2 | Evaluación ex post de las inversiones | manual | 87d | 2027-09-01 | 2027-12-30 |  |  |  | Sin iniciar | Inversiones |  |  |
| 352 | 1.5.1.3 | Sostenibilidad | manual | 81d | 2027-10-11 | 2028-01-29 |  |  |  | Sin iniciar | Inversiones |  |  |
| 353 | 1.5.2 | **Módulo de servicios de contabilización** |  | 656d | 2026-03-13 A | 2028-09-16 |  | 18% | 536.62d |  | Contabilidad |  |  |
| 354 | 1.5.2.1 | Generación del asiento de apertura del ejercicio | manual | 61d | 2026-03-13 A | 2026-06-05 A |  | 100% |  | Terminado | Contabilidad |  |  |
| 355 | 1.5.2.2 | Integrar la Información contable | manual | 136d | 2027-02-08 | 2027-08-15 |  |  |  | Sin iniciar | Contabilidad |  |  |
| 356 | 1.5.2.3 | Consolidación presupuestal | manual | 92d | 2027-10-15 | 2028-02-20 | 108FS-5d |  |  | Sin iniciar | Contabilidad |  |  |
| 357 | 1.5.2.4 | Consolidación contable | manual | 113d | 2027-10-15 | 2028-03-21 | 109FS-5d |  |  | Sin iniciar | Contabilidad |  |  |
| 358 | 1.5.2.5 | Estados financieros | manual | 87d | 2027-02-08 | 2027-06-08 |  |  |  | Sin iniciar | Contabilidad |  |  |
| 359 | 1.5.2.6 | Estados presupuestales | manual | 93d | 2026-10-01 | 2027-02-06 |  |  |  | Sin iniciar | Contabilidad |  |  |
| 360 | 1.5.2.7 | Cierre presupuestario | manual | 93d | 2026-10-01 | 2027-02-06 |  |  |  | Sin iniciar | Contabilidad |  |  |
| 361 | 1.5.2.8 | Cierre contable | manual | 69d | 2026-06-26 A | 2026-09-30 A |  | 100% |  | Terminado | Contabilidad |  |  |
| 362 | 1.5.2.9 | Libro mayor y libro diario | manual | 64d | 2026-07-03 A | 2026-09-30 A |  | 100% |  | Terminado | Contabilidad |  |  |
| 363 | 1.5.2.10 | Elaborar, presentar y aprobar la Cuenta General de la República | manual | 129d | 2028-03-22 | 2028-09-16 | 379 |  |  | Sin iniciar | Contabilidad |  |  |
| 364 | 1.5.2.11 | Elaboración de las Estadísticas de las Finanzas Públicas | manual | 129d | 2028-02-22 | 2028-08-18 |  |  |  | Sin iniciar | Contabilidad |  |  |
| 365 | 1.5.3 | **Módulo de Evaluación presupuestaria** |  | 125d | 2027-10-04 | 2028-03-24 |  |  |  |  | Presupuesto |  |  |
| 366 | 1.5.3.1 | Seguimiento de metas físicas y financieras a nivel de actividades | manual | 45d | 2027-10-04 | 2027-12-03 |  |  |  | Sin iniciar | Presupuesto |  |  |
| 367 | 1.5.3.2 | Seguimiento de metas físicas y financieras a nivel de Programas Presupuestarios | manual | 45d | 2027-10-04 | 2027-12-03 |  |  |  | Sin iniciar | Presupuesto |  |  |
| 368 | 1.5.3.3 | Seguimiento dinámico del Gasto | manual | 45d | 2027-10-18 | 2027-12-17 |  |  |  | Sin iniciar | Presupuesto |  |  |
| 369 | 1.5.3.4 | Generación automática del informe Global de la Gestión Presupuestaria | manual | 45d | 2027-11-22 | 2028-01-21 | 378FF |  |  | Sin iniciar | Presupuesto |  |  |
| 370 | 1.5.3.5 | Seguimiento y Evaluación de Indicadores de Desempeño de PPs | manual | 44d | 2027-12-01 | 2028-01-30 |  |  |  | Sin iniciar | Presupuesto |  |  |
| 371 | 1.5.3.6 | Registro y control de información de las Evaluaciones | manual | 44d | 2027-12-01 | 2028-01-30 |  |  |  | Sin iniciar | Presupuesto |  |  |
| 372 | 1.5.3.7 | Programación y Evaluación de incentivos | manual | 43d | 2027-12-16 | 2028-02-14 |  |  |  | Sin iniciar | Presupuesto |  |  |
| 373 | 1.5.3.8 | Elaboración del Análisis de Calidad del Gasto | manual | 45d | 2028-01-24 | 2028-03-24 |  |  |  | Sin iniciar | Presupuesto |  |  |
| 374 | 1.6 | Propuesta de integración – tareas nuevas, entregas parciales e hitos (Escenario 2) | manual | 0d | 2026-11-30 | 2029-12-28 |  |  |  |  |  |  |  |
| 375 | 1.6.1 | Tareas nuevas | manual | 0d | 2027-02-01 | 2029-12-28 |  |  |  |  |  |  |  |
| 376 | 1.6.1.1 | N1 · Asignación de pago – versión mínima (cuota de pago v1 con reglas vigentes) | manual | 23d | 2027-05-03 | 2027-06-02 | 161 |  |  |  | Tesorería | Nueva tarea | N1 |
| 377 | 1.6.1.2 | N2 · Certificación y modelo común de datos del gasto (certificación, compromiso y devengado) | manual | 45d | 2027-02-01 | 2027-04-02 |  |  |  |  | Presupuesto | Nueva tarea | N2 |
| 378 | 1.6.1.3 | N3 · Devengado de gastos de bienes, servicios y obras | manual | 40d | 2027-11-01 | 2027-12-24 | 387, 181 |  |  |  | Presupuesto | Nueva tarea | N3 |
| 379 | 1.6.1.4 | N5 · Adecuación de cierres y estados presupuestales a las fuentes AFSP | manual | 40d | 2027-12-27 | 2028-02-18 | 378 |  |  |  | Contabilidad | Nueva tarea | N5 |
| 380 | 1.6.1.5 | N6 · Actualización 3 de Catálogo de Eventos y Motor de Contabilización | manual | 45d | 2029-04-02 | 2029-06-01 | 347 |  |  |  | Contabilidad | Nueva tarea | N6 |
| 381 | 1.6.1.6 | N7 · Actualización 4 de Catálogo de Eventos y Motor de Contabilización | manual | 65d | 2029-10-01 | 2029-12-28 | 380, 296FF |  |  |  | Contabilidad | Nueva tarea | N7 |
| 382 | 1.6.1.7 | N4 · Actualización del MFD de Formulación para proyectos de inversión (Formulación v2) | manual | 30d | 2027-07-01 | 2027-08-11 | 150, 144 |  |  |  | Presupuesto | Nueva tarea | N4 |
| 383 | 1.6.1.8 | N10 · Validación de la integración Gestión 2028–2029 con Cuenta General y Estadísticas de Finanzas Públicas | manual | 65d | 2029-10-01 | 2029-12-28 | 363, 381FF |  |  |  | Contabilidad | Nueva tarea | N10 |
| 384 | 1.6.1.9 | N11 · Revisión de catálogos de almacén antes de Logística (versión 2) | manual | 20d | 2028-10-02 | 2028-10-27 |  |  |  |  | Abastecimiento | Nueva tarea | N11 |
| 385 | 1.6.2 | Entregas parciales (hitos) | manual | 0d | 2026-11-30 | 2027-10-29 |  |  |  |  |  |  |  |
| 386 | 1.6.2.1 | M1 · Hito: interfaz de contrato, OC y OS aprobada (entrega parcial de 196) | milestone, manual | 0d | 2027-06-29 | 2027-06-29 | 196SS+32d |  |  |  | Abastecimiento | Hito | M1 |
| 387 | 1.6.2.2 | M2 · Hito: interfaz de Conformidad aprobada (entrega parcial de 197) | milestone, manual | 0d | 2027-10-29 | 2027-10-29 | 197SS+42d |  |  |  | Abastecimiento | Hito | M2 |
| 388 | 1.6.2.3 | M3 · Hito: versión mínima de catálogos para Programación (estructura aprobada) | milestone, manual | 0d | 2027-01-15 | 2027-01-15 | 46, 65, 66, 129, 130, 131, 128SS+40d, 132SS+40d |  |  |  | Presupuesto | Hito | M3 |
| 389 | 1.6.2.4 | M4 · Hito: estructura de metas v1 aprobada (entrega parcial de 140) | milestone, manual | 0d | 2027-01-15 | 2027-01-15 | 140SS+30d |  |  |  | Presupuesto | Hito | M4 |
| 390 | 1.6.2.5 | M5 · Hito: estructura del Catálogo relacional Deuda–Inversión aprobada | milestone, manual | 0d | 2026-11-30 | 2026-11-30 | 82SS+20d |  |  |  | Endeudamiento | Hito | M5 |
| 391 | 1.6.2.6 | M8 · Hito: proyección preliminar del servicio de deuda para la Formulación | milestone, manual | 0d | 2027-01-15 | 2027-01-15 | 168FF-10d |  |  |  | Endeudamiento | Hito | M8 |
| 392 | 1.6.2.7 | M9 · Hito: estimación preliminar de ingresos por OOC, RO y RD para la Formulación | milestone, manual | 0d | 2027-01-15 | 2027-01-15 | 160FF-10d |  |  |  | Tesorería | Hito | M9 |
| 393 | 1.6.2.8 | M6 · Hito: interfaz planilla–compromiso–devengado–pago validada con GFRH | milestone, manual | 0d | 2027-08-11 | 2027-08-11 | 182SS+40d |  |  |  | GFRH | Hito | M6 |
| 394 | 1.6.3 | Hitos de integración | manual | 0d | 2027-01-15 | 2029-12-28 |  |  |  |  |  |  |  |
| 395 | 1.6.3.1 | H1 · Clasificadores y Catálogos (versión mínima) disponibles para Programación | milestone, manual | 0d | 2027-01-15 | 2027-01-15 | 388 |  |  |  | Transversal | Hito | H1 |
| 396 | 1.6.3.2 | H2 · Programación integrada entre sistemas | milestone, manual | 0d | 2027-02-05 | 2027-02-05 | 149, 145, 169, 160, 153, 138 |  |  |  | Transversal | Hito | H2 |
| 397 | 1.6.3.3 | H3 · Programación y Gestión articuladas (Apertura y cuotas) | milestone, manual | 0d | 2027-05-31 | 2027-05-31 | 173, 175, 176 |  |  |  | Transversal | Hito | H3 |
| 398 | 1.6.3.4 | H4 · Ciclo certificación–compromiso–devengado–pago integrado (diseño) | milestone, manual | 0d | 2027-12-24 | 2027-12-24 | 378, 236, 234, 181 |  |  |  | Transversal | Hito | H4 |
| 399 | 1.6.3.5 | H5 · Gestión y Contabilidad articuladas (motor contable v2) | milestone, manual | 0d | 2028-09-22 | 2028-09-22 | 347 |  |  |  | Transversal | Hito | H5 |
| 400 | 1.6.3.6 | H6 · Gestión y Evaluación articuladas | milestone, manual | 0d | 2028-09-16 | 2028-09-16 | 363, 373, 352 |  |  |  | Transversal | Hito | H6 |
| 401 | 1.6.3.7 | H7 · Integración funcional completa de los siete sistemas (diseño) | milestone, manual | 0d | 2029-12-28 | 2029-12-28 | 381, 383, 296 |  |  |  | Transversal | Hito | H7 |

Notes:
- 376: Habilita los pagos que se diseñan desde el 16/06/2027 (236) usando los flujos de caja proyectados (161). Se conserva la duración de la fila 163 (23 días).
- 377: Las Actuaciones preparatorias (195) requieren la certificación de crédito, y Pagos (234, 236) requiere el modelo del devengado. Duración igual a la de la fila 181 (45 días).
- 378: Separa el devengado del compromiso para alinearlo con la Conformidad (197).
- 379: Escenario A: los cierres de 2026–2027 usan el SIAF-SP (integración 344 concluida). Esta tarea adapta 355, 358, 359 y 360 cuando exista la ejecución AFSP, antes de la Cuenta General (363).
- 380: Cubre los eventos de Endeudamiento etapa 2 y de Abastecimiento diseñados entre oct 2028 y mar 2029.
- 381: Cierra la cobertura contable de los procesos diseñados hasta dic 2029; termina con el proyecto (FF con 296).
- 382: Incorpora al MFD de Formulación (144) el presupuesto por proyecto diseñado en 150, en lugar de adelantar 150.
- 383: Evaluación termina en 2028, pero Endeudamiento y Abastecimiento diseñan hasta 2029: se valida que sus datos lleguen a 363 y 364.
- 384: Los catálogos 70–74 se cerraron en 2026 y se usan desde 2029: se revisan antes del diseño de almacén.
- 386: Entrega parcial de 196: estructura de datos del contrato y de la orden, suficiente para diseñar el compromiso.
- 387: Entrega parcial de 197: datos de la conformidad que habilitan el devengado.
- 388: Estructura (atributos y relaciones) aprobada de 46, 47, 65, 66 y 128–132. El poblado completo puede seguir después.
- 389: La Formulación (144) cierra su MFD con la estructura de metas; el Administrador de Metas (140) se completa para la Apertura.
- 390: Entrega parcial de 82 que necesitan 149 y 256.
- 391: Versión preliminar de 167/169 para que la Formulación (144) cierre con el dato de deuda. Se mantiene la restricción de 165 y 170.
- 392: Versión preliminar de 160 para la Formulación (144).
- 393: GFRH concluyó su diseño en 2026; se valida su interfaz dentro de la Ejecución de gestión fiscal (182).
- 395: Hito de aprobación del diseño funcional integrado (MFD).
- 396: Hito de aprobación del diseño funcional integrado (MFD).
- 397: Hito de aprobación del diseño funcional integrado (MFD).
- 398: Hito de aprobación del diseño funcional integrado (MFD).
- 399: Hito de aprobación del diseño funcional integrado (MFD).
- 400: Hito de aprobación del diseño funcional integrado (MFD).
- 401: Hito de aprobación del diseño funcional integrado (MFD).
